# Gantt_tabell_G26

Schedule from MS Project, 2026-01-12 to 2026-06-02.

## Calendars

- Standard: Mon-Fri 08:00-12:00, 13:00-17:00; Sat-Sun off.

## Schedule

| ID | WBS | Task | Duration | Start | Finish | Predecessors | Baseline start | Baseline finish | Baseline duration | Total slack | Deadline |
| --- | --- | --- | --- | --- | --- | --- | --- | --- | --- | --- | --- |
| 1 | 1 | **1.0 Initiering** | 22d | 2026-01-12 | 2026-02-10 |  | 2026-01-12 | 2026-02-10 | 22d | 0d |  |
| 2 | 1.1 | 1.1 Prosjektavklaring (proposal) | 7d | 2026-01-12 | 2026-01-20 |  | 2026-01-12 | 2026-01-20 | 7d | 0d |  |
| 3 | 1.2 | 1.2 Litteratursøk | 15d | 2026-01-21 | 2026-02-10 | 2 | 2026-01-21 | 2026-02-10 | 15d | 0d | 2026-02-23 |
| 4 | 1.3 | 1.3 Datatilgang avklart | 7d | 2026-01-21 | 2026-01-29 | 2 | 2026-01-21 | 2026-01-29 | 7d | 8d |  |
| 5 | 2 | **2.0 Planlegging** | 27d | 2026-02-11 | 2026-03-19 |  | 2026-02-24 | 2026-03-16 | 15d | 0d |  |
| 6 | 2.1 | 2.1 Prosjektsstyringsplan | 20d | 2026-02-11 | 2026-03-10 | 3, 4 | 2026-02-24 | 2026-03-04 | 7d | 0d | 2026-03-16 |
| 7 | 2.2 | 2.2 Kravspesifikasjon | 10d | 2026-02-11 | 2026-02-24 | 3 | 2026-02-24 | 2026-03-09 | 10d | 10d |  |
| 8 | 2.3 | 2.3 Forskningsplan | 7d | 2026-03-11 | 2026-03-19 | 6, 7 | 2026-03-10 | 2026-03-18 | 7d | 0d |  |
| 9 | 2.4 | 2.4 WBS og Gantt | 7d | 2026-03-11 | 2026-03-19 | 6 | 2026-03-05 | 2026-03-13 | 7d | 0d |  |
| 10 | 3 | **3.0 Gjennomføring** | 39d | 2026-03-20 | 2026-05-13 |  | 2026-03-17 | 2026-04-27 | 30d? | 0d |  |
| 11 | 3.1 | 3.1 Datainnhenting og klargjøring | 7d | 2026-03-20 | 2026-03-30 | 8, 9 | 2026-03-19 | 2026-03-27 | 7d | 0d |  |
| 12 | 3.2 | 3.2 EDA | 7d | 2026-03-31 | 2026-04-08 | 11 | 2026-03-30 | 2026-04-07 | 7d | 0d |  |
| 13 | 3.3 | 3.3 Gap-deteksjonslogikk | 15d | 2026-04-09 | 2026-04-29 | 12 | 2026-04-08 | 2026-04-28 | 15d | 0d |  |
| 14 | 3.4 | 3.4 Varslingslogikk | 15d | 2026-04-09 | 2026-04-29 | 12 | 2026-04-08 | 2026-04-28 | 15d | 0d |  |
| 15 | 3.5 | 3.5 Validering og testing | 10d | 2026-04-30 | 2026-05-13 | 13, 14 | 2026-04-29 | 2026-05-12 | 10d | 0d |  |
| 16 | 3.6 | 3.6 Rapportskriving (løpende) | 15d | 2026-03-31 | 2026-04-20 | 11 | 2026-03-30 | 2026-04-17 | 15d | 5d | 2026-04-27 |
| 17 | 4 | **4.0 Avslutning** | 14d | 2026-05-14 | 2026-06-02 |  | 2026-04-28 | 2026-05-31 | 25d? | 0d |  |
| 18 | 4.1 | 4.1 Sluttrapport | 7d | 2026-05-14 | 2026-05-22 | 15, 16 | 2026-05-13 | 2026-05-21 | 7d | 0d | 2026-05-31 |
| 19 | 4.2 | 4.2 KI-dokumentasjon | 6d | 2026-05-25 | 2026-06-01 | 18 | 2026-05-22 | 2026-05-29 | 6d | 0d |  |
| 20 | 4.3 | 4.3 Muntlig presentasjon | 1d | 2026-06-02 | 2026-06-02 | 19, 18 | 2026-06-01 | 2026-06-01 | 1d | 0d |  |
